# DFS人力资源系统重构项目

Schedule from a web Gantt chart, 2024-07-01 to 2024-08-23.
Saturdays and Sundays are off

## Schedule

| ID | WBS | Task | Type | Duration | Start | Finish |
| --- | --- | --- | --- | --- | --- | --- |
| 2 | 1 | **项目准备阶段** |  | 23d | 2024-07-01 | 2024-07-31 |
| 3 | 1.1 | **商务准备** |  | 23d | 2024-07-01 | 2024-07-31 |
| 4 | 1.1.1 | 技术协议书编写 |  | 5d | 2024-07-01 | 2024-07-05 |
| 5 | 1.1.2 | 合同签署确认 | fixed end | 23d | 2024-07-01 | 2024-07-31 |
| 6 | 1.2 | **建立项目组工作环境** |  | 3d | 2024-07-01 | 2024-07-03 |
| 7 | 1.2.1 | 办公室和会议室 |  | 1d | 2024-07-01 | 2024-07-01 |
| 8 | 1.2.2 | 门禁、网络、通讯工具、饭卡、SVN |  | 3d | 2024-07-01 | 2024-07-03 |
| 9 | 1.2.3 | 其他办公设备和后勤保障（打印等） |  | 3d | 2024-07-01 | 2024-07-03 |
| 10 | 1.3 | **确定项目组机构** |  | 20d | 2024-07-01 | 2024-07-26 |
| 11 | 1.3.1 | 东风南方项目组织架构搭建 |  | 5d | 2024-07-01 | 2024-07-05 |
| 12 | 1.3.2 | 盖雅项目组织架构搭建 |  | 5d | 2024-07-01 | 2024-07-05 |
| 13 | 1.3.3 | 东风南方项目组成员和关键用户确认 |  | 15d | 2024-07-08 | 2024-07-26 |
| 14 | 1.3.4 | 盖雅项目组成员确认 |  | 15d | 2024-07-08 | 2024-07-26 |
| 15 | 2 | **项目启动阶段** |  | 40d | 2024-07-01 | 2024-08-23 |
| 16 | 2.1 | **项目章程编写** |  | 5d | 2024-07-01 | 2024-07-05 |
| 17 | 2.1.1 | 制定项目管理的标准与规范 |  | 5d | 2024-07-01 | 2024-07-05 |
| 18 | 2.1.2 | 确定项目沟通交流策略及计划 |  | 5d | 2024-07-01 | 2024-07-05 |
| 19 | 2.1.3 | 项目实施方法及管理方案 |  | 5d | 2024-07-01 | 2024-07-05 |
| 20 | 2.1.4 | 定义项目文件管理方法 |  | 5d | 2024-07-01 | 2024-07-05 |
| 21 | 2.1.5 | 项目问题管理方案 |  | 5d | 2024-07-01 | 2024-07-05 |
| 22 | 2.2 | **实施计划编写** |  | 10d | 2024-07-01 | 2024-07-12 |
| 23 | 2.2.1 | 定义项目实施目标 |  | 5d | 2024-07-08 | 2024-07-12 |
| 24 | 2.2.2 | 确定项目实施策略及方法 |  | 5d | 2024-07-08 | 2024-07-12 |
| 25 | 2.2.3 | 制定并完善项目工作计划 |  | 10d | 2024-07-01 | 2024-07-12 |

| ID | WBS | Task | Type | Duration | Start | Finish |
| --- | --- | --- | --- | --- | --- | --- |
| 26 | 2.3 | **项目启动会** |  | 30d | 2024-07-15 | 2024-08-23 |
| 27 | 2.3.1 | 启动会材料准备 |  | 10d | 2024-07-15 | 2024-07-26 |
| 28 | 2.3.2 | 项目启动会 | fixed end | 5d | 2024-08-19 | 2024-08-23 |
| 29 | 2.4 | **管理层汇报及沟通** |  | 15d | 2024-07-29 | 2024-08-16 |
| 30 | 2.4.1 | 人力资源部领导汇报 |  | 5d | 2024-07-29 | 2024-08-02 |
| 31 | 2.4.2 | 高层访谈和愿景研讨 |  | 5d | 2024-08-12 | 2024-08-16 |
| 32 | 2.5 | **业务调研阶段** |  | 6d | 2024-07-01 | 2024-07-08 |
| 33 | 2.5.1 | **硬件环境准备** |  | 6d | 2024-07-01 | 2024-07-08 |
| 34 | 2.5.1.1 | 定义环境需求 |  | 1d | 2024-07-08 | 2024-07-08 |
| 35 | 2.5.1.2 | 定义和分配团队系统访问权限 |  | 1d | 2024-07-01 | 2024-07-01 |
| 36 | 2.5.1.3 | 定义技术标准和流程 |  | 1d | 2024-07-01 | 2024-07-01 |
| 37 | 2.5.1.4 | 硬件蓝图设计文档编写 |  | 1d | 2024-07-01 | 2024-07-01 |
| 38 | 2.5.1.5 | 硬件环境准备 |  | 1d | 2024-07-01 | 2024-07-01 |
| 39 | 2.5.1.6 | 测试、生产环境系统安装和部署 |  | 1d | 2024-07-01 | 2024-07-01 |
